Schedule from GanttProject, 2024-12-10 to 2025-04-07.

## Calendars

- Project calendar: Mon-Fri working; Sat-Sun off. Exceptions (off unless hours are given): 2024-12-23 (Vacances sur 23/12/2024 00:00), 2024-12-24 (Vacances sur 24/12/2024 00:00), 2024-12-25 (Vacances sur 25/12/2024 00:00), 2024-12-26 (Vacances sur 26/12/2024 00:00), 2024-12-27 (Vacances sur 27/12/2024 00:00), 2025-01-01 (Vacances sur 01/01/2025 00:00).

## Resources

| Resource |
| --- |
| Technicien 1 |
| Technicien 2 |
| Technicien 3 |
| Technicien 4 |

## Schedule

| ID | WBS | Task | Duration | Start | Finish | Predecessors | Resources |
| --- | --- | --- | --- | --- | --- | --- | --- |
| 1 | 1 | Schématisation Réseaux | 5d | 2024-12-10 | 2024-12-16 |  | Technicien 1; Technicien 2; Technicien 3; Technicien 4 |
| 2 | 2 | Plan d'adressage | 5d | 2024-12-17 | 2024-12-30 | 1 | Technicien 1; Technicien 2; Technicien 3; Technicien 4 |
| 3 | 3 | **eXia** | 14d | 2024-12-31 | 2025-01-20 |  |  |
| 4 | 3.1 | Analyse Technique eXia | 2d | 2024-12-31 | 2025-01-02 | 2 | Technicien 2; Technicien 3 |
| 5 | 3.2 | Validation eXia | 1d | 2025-01-03 | 2025-01-03 | 4 | Technicien 2; Technicien 3 |
| 6 | 3.3 | Commande eXia | 2d | 2025-01-06 | 2025-01-07 | 5 |  |
| 7 | 3.4 | Installation eXia | 5d | 2025-01-10 | 2025-01-16 | 6, 13 | Technicien 2; Technicien 3 |
| 8 | 3.5 | Configuration eXia | 2d | 2025-01-17 | 2025-01-20 | 7 | Technicien 2; Technicien 3 |
| 9 | 4 | **Bibliothèque** | 15d | 2024-12-31 | 2025-01-21 |  |  |
| 10 | 4.1 | Analyse Technique Bibliothèque | 2d | 2024-12-31 | 2025-01-02 | 2 | Technicien 1; Technicien 4 |
| 11 | 4.2 | Validation Bibliothèque | 1d | 2025-01-03 | 2025-01-03 | 10 | Technicien 1; Technicien 4 |
| 12 | 4.3 | Commande Bibliothèque | 2d | 2025-01-06 | 2025-01-07 | 11 |  |
| 13 | 4.4 | Démantèlement Bibliothèque | 4d | 2025-01-06 | 2025-01-09 | 11 | Technicien 1; Technicien 2; Technicien 3; Technicien 4 |
| 14 | 4.5 | Installation Bibliothèque | 5d | 2025-01-10 | 2025-01-16 | 12, 13 | Technicien 1; Technicien 4 |
| 15 | 4.6 | Configuration Bibliothèque | 3d | 2025-01-17 | 2025-01-21 | 13, 14 | Technicien 1; Technicien 4 |
| 16 | 5 | **Engie** | 23d | 2025-01-21 | 2025-02-20 |  |  |
| 17 | 5.1 | **Analyse Technique Engie** | 2d | 2025-01-21 | 2025-01-22 | 8 |  |
| 18 | 5.1.1 | Avant installation bibliothèque | 1d | 2025-01-21 | 2025-01-21 |  | Technicien 2; Technicien 3 |
| 19 | 5.1.2 | Après installation bibliothèque | 1d | 2025-01-22 | 2025-01-22 | 18 | Technicien 1; Technicien 2; Technicien 3; Technicien 4 |
| 20 | 5.2 | Validation Engie | 1d | 2025-01-23 | 2025-01-23 | 17 | Technicien 1; Technicien 2; Technicien 3; Technicien 4 |
| 21 | 5.3 | Commande Engie | 3d | 2025-01-24 | 2025-01-28 | 20 |  |
| 22 | 5.4 | **Démantelèment Engie** | 8d | 2025-01-24 | 2025-02-04 | 20 |  |
| 23 | 5.4.1 | tâche_39 | 3d | 2025-01-24 | 2025-01-28 |  | Technicien 2; Technicien 3 |
| 24 | 5.4.2 | tâche_40 | 5d | 2025-01-29 | 2025-02-04 | 23 | Technicien 1; Technicien 2; Technicien 3; Technicien 4 |

| ID | WBS | Task | Duration | Start | Finish | Predecessors | Resources |
| --- | --- | --- | --- | --- | --- | --- | --- |
| 25 | 5.5 | **Installation Engie** | 8d | 2025-02-05 | 2025-02-14 | 21, 22 |  |
| 26 | 5.5.1 | tâche_43 | 2d | 2025-02-05 | 2025-02-06 |  | Technicien 1; Technicien 2; Technicien 3; Technicien 4 |
| 27 | 5.5.2 | tâche_45 | 3d | 2025-02-07 | 2025-02-11 | 26 | Technicien 2; Technicien 3 |
| 28 | 5.5.3 | Copie_tâche_43 | 3d | 2025-02-12 | 2025-02-14 | 27 | Technicien 1; Technicien 2; Technicien 3; Technicien 4 |
| 29 | 5.6 | Configuration Engie | 4d | 2025-02-17 | 2025-02-20 | 22, 25 | Technicien 2; Technicien 3 |
| 30 | 6 | **Digiplex** | 43d | 2025-01-24 | 2025-03-25 |  |  |
| 31 | 6.1 | Identification Digiplex | 2d | 2025-01-24 | 2025-01-27 | 15, 20 | Technicien 1; Technicien 4 |
| 32 | 6.2 | Validation Digiplex | 1d | 2025-01-28 | 2025-01-28 | 31 | Technicien 1; Technicien 4 |
| 33 | 6.3 | Approvisionnement Digiplex | 2d | 2025-01-29 | 2025-01-30 | 32 |  |
| 34 | 6.4 | **Installation Digiplex** | 20d | 2025-02-17 | 2025-03-14 | 22, 25, 33 |  |
| 35 | 6.4.1 | tâche_41 | 4d | 2025-02-17 | 2025-02-20 |  | Technicien 1; Technicien 4 |
| 36 | 6.4.2 | tâche_42 | 16d | 2025-02-21 | 2025-03-14 | 35 | Technicien 1; Technicien 2; Technicien 3; Technicien 4 |
| 37 | 6.5 | Configuration Digiplex | 7d | 2025-03-17 | 2025-03-25 | 34 | Technicien 1; Technicien 2; Technicien 3; Technicien 4 |
| 38 | 7 | **Datacenter** | 37d | 2025-02-07 | 2025-03-31 |  |  |
| 39 | 7.1 | Identification Datacenter | 2d | 2025-02-07 | 2025-02-10 |  | Technicien 1; Technicien 4 |
| 40 | 7.2 | Validation Datacenter | 1d | 2025-02-11 | 2025-02-11 | 39 | Technicien 1; Technicien 4 |
| 41 | 7.3 | Configuration IPv6 | 2d | 2025-03-26 | 2025-03-27 | 29, 37, 40 | Technicien 1; Technicien 2; Technicien 3; Technicien 4 |
| 42 | 7.4 | Tests et validation | 2d | 2025-03-28 | 2025-03-31 | 41 | Technicien 1; Technicien 2; Technicien 3; Technicien 4 |
| 43 | 8 | Tests Connectivité | 5d | 2025-04-01 | 2025-04-07 | 42 | Technicien 1; Technicien 2; Technicien 3; Technicien 4 |
